# Product Management for Theremizer

Schedule from MS Project, 2019-11-06 to 2019-12-11.
ASG Software Solutions

## Calendars

- Standard: Mon-Fri 08:00-12:00, 13:00-17:00; Sat-Sun off. Exceptions (off unless hours are given): 2019-11-23 08:00-12:00, 13:00-17:00, 2019-11-30 08:00-12:00, 13:00-17:00.

## Resources

| Resource |
| --- |
| Jeff |
| Bader |
| Kai |
| Andrew |

## Schedule

| ID | WBS | Task | Type | Duration | Start | Finish | Predecessors | Total slack | Free slack | Resources | Work | Text2 | Text7 |
| --- | --- | --- | --- | --- | --- | --- | --- | --- | --- | --- | --- | --- | --- |
| 1 | 1 | **Prototyping Hardware & Processor** |  | 8d | 2019-11-06 | 2019-11-15 |  | 0d |  |  | 157h |  |  |
| 2 | 1.1 | **Finalize Sound Generator** |  | 7.62d | 2019-11-06 | 2019-11-15 |  | 0d |  |  | 61h |  |  |
| 3 | 1.1.1 | Move breadboard prototype to protoboard | manual | 5d | 2019-11-06 | 2019-11-12 |  |  |  | Jeff | 40h | VPEND/></VP> | Goals and Objectives, List of Constraints |
| 4 | 1.1.2 | Design Test |  | 3h | 2019-11-13 | 2019-11-13 | 3 | 2.12d | 0d | Jeff | 3h |  |  |
| 5 | 1.1.3 | Perform Test |  | 1d | 2019-11-13 | 2019-11-14 | 4 | 2.12d | 0d | Jeff | 8h |  |  |
| 6 | 1.1.4 | Implement Changes on board |  | 2h | 2019-11-14 | 2019-11-14 | 5 | 2.12d | 0d | Jeff | 2h |  |  |
| 7 | 1.1.5 | Final Testing |  | 1d | 2019-11-14 | 2019-11-15 | 6 | 2.12d | 0d | Jeff | 8h |  |  |
| 8 | 1.1.6 | Protoboard functional | milestone | 0d | 2019-11-15 | 2019-11-15 | 7 | 6.25d |  |  |  |  |  |
| 9 | 1.2 | **Finalize filter design** |  | 4d | 2019-11-06 | 2019-11-11 |  | 5.75d | 4d |  | 32h |  |  |
| 10 | 1.2.1 | Select trim resistor values |  | 2d | 2019-11-06 | 2019-11-07 |  | 5.75d | 0d | Andrew | 16h |  |  |
| 11 | 1.2.2 | Test with Sound Generator |  | 2d | 2019-11-08 | 2019-11-11 | 10 | 5.75d | 0d | Andrew | 16h |  |  |
| 12 | 1.2.3 | Filters and embiggens signal correctly | milestone | 0d | 2019-11-11 | 2019-11-11 | 11 | 9.88d |  |  |  |  |  |
| 13 | 1.3 | **Implement Processor CV Generation** |  | 8d | 2019-11-06 | 2019-11-15 |  | 1.75d |  |  | 64h |  |  |
| 14 | 1.3.1 | Research ADC reading and PWM output |  | 2d | 2019-11-06 | 2019-11-07 |  | 5.88d | 0d | Bader | 16h |  |  |
| 15 | 1.3.2 | Write code |  | 4d | 2019-11-08 | 2019-11-13 | 14 | 5.88d | 0d | Bader | 32h |  |  |
| 16 | 1.3.3 | Test code and rewrite if necessary |  | 2d | 2019-11-14 | 2019-11-15 | 15 | 5.88d | 0d | Bader | 16h |  |  |
| 17 | 1.3.4 | Processor outputs control voltage in desired range | milestone | 0d | 2019-11-15 | 2019-11-15 | 16 | 5.88d |  | Bader |  |  |  |
| 18 | 2 | **Finalize Schematic** |  | 2d | 2019-11-18 | 2019-11-19 | 1 | 1.75d | 0d |  | 16h |  |  |
| 19 | 2.1 | Add changes |  | 1d | 2019-11-18 | 2019-11-18 | 2, 9 | 1.75d | 0d | Andrew | 8h |  |  |
| 20 | 2.2 | Pass ERC | milestone | 0d | 2019-11-18 | 2019-11-18 | 19 | 5.5d | 0d |  |  |  |  |
| 21 | 2.3 | Review with team |  | 1d | 2019-11-19 | 2019-11-19 | 20 | 1.75d | 0d | Kai | 8h |  |  |
| 22 | 2.4 | Team agrees schematic is finalized | milestone | 0d | 2019-11-19 | 2019-11-19 | 21 | 5.5d |  |  |  |  |  |
| 23 | 3 | **Finalize PCB Layout** |  | 3d | 2019-11-20 | 2019-11-22 | 18 | 1.75d | 0d |  | 24h |  |  |
| 24 | 3.1 | Layout after schematic finalized |  | 2d | 2019-11-20 | 2019-11-21 | 18 | 1.75d | 0d | Andrew | 16h |  |  |
| 25 | 3.2 | Pass DRC | milestone | 0d | 2019-11-21 | 2019-11-21 | 24 | 5.5d | 0d |  |  |  |  |
| 26 | 3.3 | Review with team |  | 1d | 2019-11-22 | 2019-11-22 | 25 | 1.75d | 0d | Andrew | 8h |  |  |
| 27 | 3.4 | Team agrees layout is finalized | milestone | 0d | 2019-11-22 | 2019-11-22 | 26 | 5.5d |  |  |  |  |  |

Notes:
- 1: Text1: VPEND<VP ID="0_134424" TYP="0" />
- 2: Text1: VPEND<VP ID="0_168547" TYP="0" />
- 3: Text1: VPDATA:<VP ID="0_80816" TYP="0"><VP ID="0_97923" TYP="3" /><VP ID="0_80996" TYP="2"><VP ID="0_141944" TYP="3" /><VP ID="0_92093" TYP="3" /><VP ID="0_81772" TYP="3" /></VP><VP ID="0_113117" TYP="2"><VP ID="0_141946" TYP="3" /></VP><VP ID="0_17301" TYP="1"

| ID | WBS | Task | Type | Duration | Start | Finish | Predecessors | Total slack | Free slack | Constraint | Resources | Work |
| --- | --- | --- | --- | --- | --- | --- | --- | --- | --- | --- | --- | --- |
| 28 | 4 | **Order & Receive Parts/PCB** |  | 6d | 2019-11-23 | 2019-11-29 | 23 | 0.75d |  |  |  | 48h |
| 29 | 4.1 | Create BOM from EAGLE |  | 3h | 2019-11-23 | 2019-11-23 | 23 | 5.75d | 0d |  | Kai | 3h |
| 30 | 4.2 | Order Parts |  | 3h | 2019-11-23 | 2019-11-23 | 29 | 5.75d | 0d |  | Kai | 3h |
| 31 | 4.3 | Generate GERBER from eagle |  | 1h | 2019-11-23 | 2019-11-23 | 30 | 5.75d | 0d |  | Kai | 1h |
| 32 | 4.4 | Place PCB order |  | 1h | 2019-11-23 | 2019-11-23 | 31 | 5.75d |  | start no earlier than 2019-11-23 | Bader | 1h |
| 33 | 4.5 | Wait for parts |  | 5d | 2019-11-25 | 2019-11-29 |  | 0.75d |  | start no earlier than 2019-11-25 | Kai | 40h |
| 34 | 4.6 | Parts/PCB's received | milestone | 0d | 2019-11-29 | 2019-11-29 |  | 5.75d |  | start no earlier than 2019-11-29 |  |  |
| 35 | 5 | **Design Enclosure** |  | 6d | 2019-11-06 | 2019-11-13 |  | 22d |  |  |  | 48h |
| 36 | 5.1 | Research premade vs custom |  | 2d | 2019-11-06 | 2019-11-07 |  | 22d | 0d |  | Kai | 16h |
| 37 | 5.2 | Get case |  | 2d | 2019-11-08 | 2019-11-11 | 36 | 22d | 0d |  | Kai | 16h |
| 38 | 5.3 | Case is received | milestone | 0d | 2019-11-11 | 2019-11-11 | 37 | 24d |  |  | Kai |  |
| 39 | 5.4 | Drill holes and create labels for pots & inputs |  | 2d | 2019-11-12 | 2019-11-13 | 37 | 22d | 0d |  | Kai | 16h |
| 40 | 5.5 | Enclosure has required holes and looks "cool" | milestone | 0d | 2019-11-13 | 2019-11-13 | 39 | 19.88d |  |  |  |  |
| 41 | 6 | **Build up boards** |  | 19.5d | 2019-11-08 | 2019-12-03 |  | 6.5d |  |  |  | 14h |
| 42 | 6.1 | Train on Reflow Oven |  | 2h | 2019-11-08 | 2019-11-08 |  | 24.25d |  | start no earlier than 2019-11-08 |  |  |
| 43 | 6.2 | Organize parts and highlight placement on layout print out |  | 4h | 2019-11-30 | 2019-12-02 | 28 | 0d |  | start no earlier than 2019-11-30 | Jeff | 4h |
| 44 | 6.3 | Place SMD and reflow in oven |  | 1d | 2019-12-02 | 2019-12-03 | 43 | 0d |  | start no earlier than 2019-12-02 | Bader | 8h |
| 45 | 6.4 | Solder through hole components |  | 2h | 2019-12-03 | 2019-12-03 | 44 | 0d |  | start no earlier than 2019-12-03 | Kai | 2h |
| 46 | 6.5 | Board has all components placed | milestone | 0d | 2019-12-03 | 2019-12-03 | 45 | 0d |  |  |  |  |
| 47 | 7 | **Test boards** |  | 28d | 2019-11-06 | 2019-12-11 |  | 0d |  |  |  | 56h |
| 48 | 7.1 | Create Test Plan |  | 2h | 2019-11-22 | 2019-11-22 |  | 15.75d |  | start no earlier than 2019-11-22 | Jeff | 2h |
| 49 | 7.2 | Describe all test cases: levels, impedances, functionality |  | 2h | 2019-11-23 | 2019-11-23 |  | 8.25d |  | start no earlier than 2019-11-23 | Jeff | 2h |
| 50 | 7.3 | Create test case benches |  | 4h | 2019-12-03 | 2019-12-03 | 49, 46 | 0d |  |  | Kai | 4h |
| 51 | 7.4 | Exhaustively test boards |  | 5d | 2019-12-04 | 2019-12-10 | 50 | 0d |  |  | Jeff | 40h |
| 52 | 7.5 | Review Board Test Results |  | 1h | 2019-12-11 | 2019-12-11 | 51 | 0d |  |  | Andrew | 1h |
| 53 | 7.6 | Implement final board mods, last test |  | 7h | 2019-12-11 | 2019-12-11 | 52 | 0d |  |  | Andrew | 7h |
| 54 | 7.7 | System works as required | milestone | 0d | 2019-11-06 | 2019-11-06 |  | 28d |  |  |  |  |

| ID | WBS | Task | Type | Duration | Start | Finish | Predecessors | Total slack | Free slack | Resources | Work |
| --- | --- | --- | --- | --- | --- | --- | --- | --- | --- | --- | --- |
| 55 | 8 | **Write Up Documentation** |  | 5d | 2019-11-23 | 2019-11-28 |  | 10d |  |  | 40h |
| 56 | 8.1 | Write initial documentation (user manual, electrical specs) |  | 2d | 2019-11-23 | 2019-11-25 | 27 | 10d | 0d | Andrew | 16h |
| 57 | 8.2 | Document review with team |  | 4h | 2019-11-26 | 2019-11-26 | 56 | 10d | 0d | Andrew | 4h |
| 58 | 8.3 | Write revised document |  | 1d | 2019-11-26 | 2019-11-27 | 57 | 10d | 0d | Andrew | 8h |
| 59 | 8.4 | Final Document review |  | 4h | 2019-11-27 | 2019-11-27 | 58 | 10d | 0d | Andrew | 4h |
| 60 | 8.5 | Implement any final revisions |  | 1d | 2019-11-28 | 2019-11-28 | 59 | 10d | 0d | Andrew | 8h |
| 61 | 8.6 | Team agrees documentation is finalized | milestone | 0d | 2019-11-28 | 2019-11-28 | 60 | 10d |  | Andrew |  |
